# C_SMS_Schedule_v0.2

Schedule from MS Project, 2013-07-01 to 2013-08-02.

## Calendars

- Standard: Mon-Fri 08:00-12:00, 13:00-17:00; Sat-Sun off.

## Resources

| Resource |
| --- |
| Team |
| Dev1 |
| Dev2 |
| Dev3 |
| Dev4 |
| Dev5 |
| Dev6 |
| Dev7 |

## Schedule

| ID | WBS | Task | Duration | Start | Finish | Predecessors | Total slack | Resources | Work |
| --- | --- | --- | --- | --- | --- | --- | --- | --- | --- |
| 1 | 1 | **Project-Code** | 25d | 2013-07-01 08:00 | 2013-08-02 17:00 |  | 0d |  | 904h |
| 2 | 1.1 | **Preparation** | 1d | 2013-07-01 08:00 | 2013-07-01 17:00 |  | 0d |  | 8h |
| 3 | 1.1.1 | Kick off project | 0.5d | 2013-07-01 08:00 | 2013-07-01 12:00 |  | 0d | Team | 4h |
| 4 | 1.1.2 | Prepare environment | 0.5d | 2013-07-01 13:00 | 2013-07-01 17:00 | 3 | 0d | Team | 4h |
| 5 | 1.2 | **Project Iteration 1** | 12d | 2013-07-02 08:00 | 2013-07-17 17:00 | 2 | 0d |  | 448h |
| 6 | 1.2.1 | **UC10 - Qly danh muc mat hang** | 11d | 2013-07-02 08:00 | 2013-07-16 17:00 |  | 0d | Dev1 | 88h |
| 7 | 1.2.1.1 | **Requirement Analyzing** | 1.5d | 2013-07-02 08:00 | 2013-07-03 12:00 |  | 0d |  |  |
| 8 | 1.2.1.1.1 | Study requirement | 0.4d | 2013-07-02 08:00 | 2013-07-02 11:12 |  | 0d |  |  |
| 9 | 1.2.1.1.2 | Prepare requirement specification | 0.6d | 2013-07-02 11:12 | 2013-07-02 17:00 | 8 | 0d |  |  |
| 10 | 1.2.1.1.3 | Review requirement specification | 0.5d | 2013-07-03 08:00 | 2013-07-03 12:00 | 9 | 0d |  |  |
| 11 | 1.2.1.2 | **Detail Design** | 1.5d | 2013-07-03 13:00 | 2013-07-04 17:00 |  | 0d |  |  |
| 12 | 1.2.1.2.1 | Study input design document | 0.4d | 2013-07-03 13:00 | 2013-07-03 16:12 | 10 | 0d |  |  |
| 13 | 1.2.1.2.2 | Prepare design specification | 0.6d | 2013-07-03 16:12 | 2013-07-04 12:00 | 12 | 0d |  |  |
| 14 | 1.2.1.2.3 | Review design specification | 0.5d | 2013-07-04 13:00 | 2013-07-04 17:00 | 13 | 0d |  |  |
| 15 | 1.2.1.3 | **UT Cases Preparing** | 1.5d | 2013-07-05 08:00 | 2013-07-08 12:00 |  | 0d |  |  |
| 16 | 1.2.1.3.1 | Prepare UT cases document | 1d | 2013-07-05 08:00 | 2013-07-05 17:00 | 14 | 0d |  |  |
| 17 | 1.2.1.3.2 | Review UT cases document round 1 | 0.5d | 2013-07-08 08:00 | 2013-07-08 12:00 | 16 | 0d |  |  |
| 18 | 1.2.1.4 | **Coding** | 3d | 2013-07-08 13:00 | 2013-07-11 12:00 |  | 0d |  |  |
| 19 | 1.2.1.4.1 | Code (output: draft version) | 1d | 2013-07-08 13:00 | 2013-07-09 12:00 | 17 | 0d |  |  |
| 20 | 1.2.1.4.2 | Review codes round 1 | 0.5d | 2013-07-09 13:00 | 2013-07-09 17:00 | 19 | 0d |  |  |
| 21 | 1.2.1.4.3 | Complete code | 0.5d | 2013-07-10 08:00 | 2013-07-10 12:00 | 20 | 0d |  |  |
| 22 | 1.2.1.4.4 | Self review & Fix bugs | 0.5d | 2013-07-10 13:00 | 2013-07-10 17:00 | 21 | 0d |  |  |
| 23 | 1.2.1.4.5 | Review codes round 2 | 0.5d | 2013-07-11 08:00 | 2013-07-11 12:00 | 22 | 0d |  |  |
| 24 | 1.2.1.5 | **Update UT Cases** | 1d | 2013-07-11 13:00 | 2013-07-12 12:00 |  | 0d |  |  |
| 25 | 1.2.1.5.1 | Update UT cases document | 0.5d | 2013-07-11 13:00 | 2013-07-11 17:00 | 23 | 0d |  |  |
| 26 | 1.2.1.5.2 | Review UT cases document round 2 | 0.5d | 2013-07-12 08:00 | 2013-07-12 12:00 | 25 | 0d |  |  |

Notes:
- 10: Eval1
- 14: Eval2
- 23: Eval3
- 26: Eval4

| ID | WBS | Task | Duration | Start | Finish | Predecessors | Total slack | Free slack | Resources | Work |
| --- | --- | --- | --- | --- | --- | --- | --- | --- | --- | --- |
| 27 | 1.2.1.6 | **Manual UT Execution** | 1d | 2013-07-12 13:00 | 2013-07-15 12:00 |  | 0d |  |  |  |
| 28 | 1.2.1.6.1 | Execute UT manually & Fix bugs | 0.5d | 2013-07-12 13:00 | 2013-07-12 17:00 | 26 | 0d |  |  |  |
| 29 | 1.2.1.6.2 | Review UT execution results round 1 | 0.5d | 2013-07-15 08:00 | 2013-07-15 12:00 | 28 | 0d |  |  |  |
| 30 | 1.2.1.7 | **Automated UT Execution** | 1.5d | 2013-07-15 13:00 | 2013-07-16 17:00 |  | 0d |  |  |  |
| 31 | 1.2.1.7.1 | Prepare UT scripts | 0.5d | 2013-07-15 13:00 | 2013-07-15 17:00 | 29 | 0d |  |  |  |
| 32 | 1.2.1.7.2 | Execute UT automatedly, Tuning scripts, update codes | 0.5d | 2013-07-16 08:00 | 2013-07-16 12:00 | 31 | 0d |  |  |  |
| 33 | 1.2.1.7.3 | Review UT scripts | 0.5d | 2013-07-16 13:00 | 2013-07-16 17:00 | 32 | 0d |  |  |  |
| 34 | 1.2.2 | **UC11 - Quan ly danh muc KH** | 11d | 2013-07-02 08:00 | 2013-07-16 17:00 |  | 1d |  | Dev2 | 88h |
| 35 | 1.2.2.1 | **Requirement Analyzing** | 1.5d | 2013-07-02 08:00 | 2013-07-03 12:00 |  | 1d |  |  |  |
| 36 | 1.2.2.1.1 | Study requirement | 0.4d | 2013-07-02 08:00 | 2013-07-02 11:12 |  | 1d | 0d |  |  |
| 37 | 1.2.2.1.2 | Prepare requirement specification | 0.6d | 2013-07-02 11:12 | 2013-07-02 17:00 | 36 | 1d | 0d |  |  |
| 38 | 1.2.2.1.3 | Review requirement specification | 0.5d | 2013-07-03 08:00 | 2013-07-03 12:00 | 37 | 1d | 0d |  |  |
| 39 | 1.2.2.2 | **Detail Design** | 1.5d | 2013-07-03 13:00 | 2013-07-04 17:00 |  | 1d |  |  |  |
| 40 | 1.2.2.2.1 | Study input design document | 0.4d | 2013-07-03 13:00 | 2013-07-03 16:12 | 38 | 1d | 0d |  |  |
| 41 | 1.2.2.2.2 | Prepare design specification | 0.6d | 2013-07-03 16:12 | 2013-07-04 12:00 | 40 | 1d | 0d |  |  |
| 42 | 1.2.2.2.3 | Review design specification | 0.5d | 2013-07-04 13:00 | 2013-07-04 17:00 | 41 | 1d | 0d |  |  |
| 43 | 1.2.2.3 | **UT Cases Preparing** | 1.5d | 2013-07-05 08:00 | 2013-07-08 12:00 |  | 1d |  |  |  |
| 44 | 1.2.2.3.1 | Prepare UT cases document | 1d | 2013-07-05 08:00 | 2013-07-05 17:00 | 42 | 1d | 0d |  |  |
| 45 | 1.2.2.3.2 | Review UT cases document round 1 | 0.5d | 2013-07-08 08:00 | 2013-07-08 12:00 | 44 | 1d | 0d |  |  |
| 46 | 1.2.2.4 | **Coding** | 3d | 2013-07-08 13:00 | 2013-07-11 12:00 |  | 1d |  |  |  |
| 47 | 1.2.2.4.1 | Code (output: draft version) | 1d | 2013-07-08 13:00 | 2013-07-09 12:00 | 45 | 1d | 0d |  |  |
| 48 | 1.2.2.4.2 | Review codes round 1 | 0.5d | 2013-07-09 13:00 | 2013-07-09 17:00 | 47 | 1d | 0d |  |  |
| 49 | 1.2.2.4.3 | Complete code | 0.5d | 2013-07-10 08:00 | 2013-07-10 12:00 | 48 | 1d | 0d |  |  |
| 50 | 1.2.2.4.4 | Self review & Fix bugs | 0.5d | 2013-07-10 13:00 | 2013-07-10 17:00 | 49 | 1d | 0d |  |  |
| 51 | 1.2.2.4.5 | Review codes round 2 | 0.5d | 2013-07-11 08:00 | 2013-07-11 12:00 | 50 | 1d | 0d |  |  |

Notes:
- 29: Eval5
- 38: Eval1
- 42: Eval2
- 51: Eval3

| ID | WBS | Task | Duration | Start | Finish | Predecessors | Total slack | Free slack | Resources | Work |
| --- | --- | --- | --- | --- | --- | --- | --- | --- | --- | --- |
| 52 | 1.2.2.5 | **Update UT Cases** | 1d | 2013-07-11 13:00 | 2013-07-12 12:00 |  | 1d |  |  |  |
| 53 | 1.2.2.5.1 | Update UT cases document | 0.5d | 2013-07-11 13:00 | 2013-07-11 17:00 | 51 | 1d | 0d |  |  |
| 54 | 1.2.2.5.2 | Review UT cases document round 2 | 0.5d | 2013-07-12 08:00 | 2013-07-12 12:00 | 53 | 1d | 0d |  |  |
| 55 | 1.2.2.6 | **Manual UT Execution** | 1d | 2013-07-12 13:00 | 2013-07-15 12:00 |  | 1d |  |  |  |
| 56 | 1.2.2.6.1 | Execute UT manually & Fix bugs | 0.5d | 2013-07-12 13:00 | 2013-07-12 17:00 | 54 | 1d | 0d |  |  |
| 57 | 1.2.2.6.2 | Review UT execution results round 1 | 0.5d | 2013-07-15 08:00 | 2013-07-15 12:00 | 56 | 1d | 0d |  |  |
| 58 | 1.2.2.7 | **Automated UT Execution** | 1.5d | 2013-07-15 13:00 | 2013-07-16 17:00 |  | 1d |  |  |  |
| 59 | 1.2.2.7.1 | Prepare UT scripts | 0.5d | 2013-07-15 13:00 | 2013-07-15 17:00 | 57 | 1d | 0d |  |  |
| 60 | 1.2.2.7.2 | Execute UT automatedly, Tuning scripts, update codes | 0.5d | 2013-07-16 08:00 | 2013-07-16 12:00 | 59 | 1d | 0d |  |  |
| 61 | 1.2.2.7.3 | Review UT scripts | 0.5d | 2013-07-16 13:00 | 2013-07-16 17:00 | 60 | 1d |  |  |  |
| 62 | 1.2.3 | **UC12 - Danh muc NVBH** | 11d | 2013-07-02 08:00 | 2013-07-16 17:00 |  | 1d |  | Dev3 | 88h |
| 63 | 1.2.3.1 | **Requirement Analyzing** | 1.5d | 2013-07-02 08:00 | 2013-07-03 12:00 |  | 1d |  |  |  |
| 64 | 1.2.3.1.1 | Study requirement | 0.4d | 2013-07-02 08:00 | 2013-07-02 11:12 |  | 1d | 0d |  |  |
| 65 | 1.2.3.1.2 | Prepare requirement specification | 0.6d | 2013-07-02 11:12 | 2013-07-02 17:00 | 64 | 1d | 0d |  |  |
| 66 | 1.2.3.1.3 | Review requirement specification | 0.5d | 2013-07-03 08:00 | 2013-07-03 12:00 | 65 | 1d | 0d |  |  |
| 67 | 1.2.3.2 | **Detail Design** | 1.5d | 2013-07-03 13:00 | 2013-07-04 17:00 |  | 1d |  |  |  |
| 68 | 1.2.3.2.1 | Study input design document | 0.4d | 2013-07-03 13:00 | 2013-07-03 16:12 | 66 | 1d | 0d |  |  |
| 69 | 1.2.3.2.2 | Prepare design specification | 0.6d | 2013-07-03 16:12 | 2013-07-04 12:00 | 68 | 1d | 0d |  |  |
| 70 | 1.2.3.2.3 | Review design specification | 0.5d | 2013-07-04 13:00 | 2013-07-04 17:00 | 69 | 1d | 0d |  |  |
| 71 | 1.2.3.3 | **UT Cases Preparing** | 1.5d | 2013-07-05 08:00 | 2013-07-08 12:00 |  | 1d |  |  |  |
| 72 | 1.2.3.3.1 | Prepare UT cases document | 1d | 2013-07-05 08:00 | 2013-07-05 17:00 | 70 | 1d | 0d |  |  |
| 73 | 1.2.3.3.2 | Review UT cases document round 1 | 0.5d | 2013-07-08 08:00 | 2013-07-08 12:00 | 72 | 1d | 0d |  |  |
| 74 | 1.2.3.4 | **Coding** | 3d | 2013-07-08 13:00 | 2013-07-11 12:00 |  | 1d |  |  |  |
| 75 | 1.2.3.4.1 | Code (output: draft version) | 1d | 2013-07-08 13:00 | 2013-07-09 12:00 | 73 | 1d | 0d |  |  |
| 76 | 1.2.3.4.2 | Review codes round 1 | 0.5d | 2013-07-09 13:00 | 2013-07-09 17:00 | 75 | 1d | 0d |  |  |
| 77 | 1.2.3.4.3 | Complete code | 0.5d | 2013-07-10 08:00 | 2013-07-10 12:00 | 76 | 1d | 0d |  |  |
| 78 | 1.2.3.4.4 | Self review & Fix bugs | 0.5d | 2013-07-10 13:00 | 2013-07-10 17:00 | 77 | 1d | 0d |  |  |
| 79 | 1.2.3.4.5 | Review codes round 2 | 0.5d | 2013-07-11 08:00 | 2013-07-11 12:00 | 78 | 1d | 0d |  |  |

Notes:
- 54: Eval4
- 57: Eval5
- 66: Eval1
- 70: Eval2
- 79: Eval3

| ID | WBS | Task | Duration | Start | Finish | Predecessors | Total slack | Free slack | Resources | Work |
| --- | --- | --- | --- | --- | --- | --- | --- | --- | --- | --- |
| 80 | 1.2.3.5 | **Update UT Cases** | 1d | 2013-07-11 13:00 | 2013-07-12 12:00 |  | 1d |  |  |  |
| 81 | 1.2.3.5.1 | Update UT cases document | 0.5d | 2013-07-11 13:00 | 2013-07-11 17:00 | 79 | 1d | 0d |  |  |
| 82 | 1.2.3.5.2 | Review UT cases document round 2 | 0.5d | 2013-07-12 08:00 | 2013-07-12 12:00 | 81 | 1d | 0d |  |  |
| 83 | 1.2.3.6 | **Manual UT Execution** | 1d | 2013-07-12 13:00 | 2013-07-15 12:00 |  | 1d |  |  |  |
| 84 | 1.2.3.6.1 | Execute UT manually & Fix bugs | 0.5d | 2013-07-12 13:00 | 2013-07-12 17:00 | 82 | 1d | 0d |  |  |
| 85 | 1.2.3.6.2 | Review UT execution results round 1 | 0.5d | 2013-07-15 08:00 | 2013-07-15 12:00 | 84 | 1d | 0d |  |  |
| 86 | 1.2.3.7 | **Automated UT Execution** | 1.5d | 2013-07-15 13:00 | 2013-07-16 17:00 |  | 1d |  |  |  |
| 87 | 1.2.3.7.1 | Prepare UT scripts | 0.5d | 2013-07-15 13:00 | 2013-07-15 17:00 | 85 | 1d | 0d |  |  |
| 88 | 1.2.3.7.2 | Execute UT automatedly, Tuning scripts, update codes | 0.5d | 2013-07-16 08:00 | 2013-07-16 12:00 | 87 | 1d | 0d |  |  |
| 89 | 1.2.3.7.3 | Review UT scripts | 0.5d | 2013-07-16 13:00 | 2013-07-16 17:00 | 88 | 1d |  |  |  |
| 90 | 1.2.4 | **UC1.1 - Danh sach hoa don mua** | 11d | 2013-07-02 08:00 | 2013-07-16 17:00 |  | 1d |  | Dev4 | 88h |
| 91 | 1.2.4.1 | **Requirement Analyzing** | 1.5d | 2013-07-02 08:00 | 2013-07-03 12:00 |  | 1d |  |  |  |
| 92 | 1.2.4.1.1 | Study requirement | 0.4d | 2013-07-02 08:00 | 2013-07-02 11:12 |  | 1d | 0d |  |  |
| 93 | 1.2.4.1.2 | Prepare requirement specification | 0.6d | 2013-07-02 11:12 | 2013-07-02 17:00 | 92 | 1d | 0d |  |  |
| 94 | 1.2.4.1.3 | Review requirement specification | 0.5d | 2013-07-03 08:00 | 2013-07-03 12:00 | 93 | 1d | 0d |  |  |
| 95 | 1.2.4.2 | **Detail Design** | 1.5d | 2013-07-03 13:00 | 2013-07-04 17:00 |  | 1d |  |  |  |
| 96 | 1.2.4.2.1 | Study input design document | 0.4d | 2013-07-03 13:00 | 2013-07-03 16:12 | 94 | 1d | 0d |  |  |
| 97 | 1.2.4.2.2 | Prepare design specification | 0.6d | 2013-07-03 16:12 | 2013-07-04 12:00 | 96 | 1d | 0d |  |  |
| 98 | 1.2.4.2.3 | Review design specification | 0.5d | 2013-07-04 13:00 | 2013-07-04 17:00 | 97 | 1d | 0d |  |  |
| 99 | 1.2.4.3 | **UT Cases Preparing** | 1.5d | 2013-07-05 08:00 | 2013-07-08 12:00 |  | 1d |  |  |  |
| 100 | 1.2.4.3.1 | Prepare UT cases document | 1d | 2013-07-05 08:00 | 2013-07-05 17:00 | 98 | 1d | 0d |  |  |
| 101 | 1.2.4.3.2 | Review UT cases document round 1 | 0.5d | 2013-07-08 08:00 | 2013-07-08 12:00 | 100 | 1d | 0d |  |  |
| 102 | 1.2.4.4 | **Coding** | 3d | 2013-07-08 13:00 | 2013-07-11 12:00 |  | 1d |  |  |  |
| 103 | 1.2.4.4.1 | Code (output: draft version) | 1d | 2013-07-08 13:00 | 2013-07-09 12:00 | 101 | 1d | 0d |  |  |
| 104 | 1.2.4.4.2 | Review codes round 1 | 0.5d | 2013-07-09 13:00 | 2013-07-09 17:00 | 103 | 1d | 0d |  |  |
| 105 | 1.2.4.4.3 | Complete code | 0.5d | 2013-07-10 08:00 | 2013-07-10 12:00 | 104 | 1d | 0d |  |  |
| 106 | 1.2.4.4.4 | Self review & Fix bugs | 0.5d | 2013-07-10 13:00 | 2013-07-10 17:00 | 105 | 1d | 0d |  |  |
| 107 | 1.2.4.4.5 | Review codes round 2 | 0.5d | 2013-07-11 08:00 | 2013-07-11 12:00 | 106 | 1d | 0d |  |  |

Notes:
- 82: Eval4
- 85: Eval5
- 94: Eval1
- 98: Eval2
- 107: Eval3

| ID | WBS | Task | Duration | Start | Finish | Predecessors | Total slack | Free slack | Resources | Work |
| --- | --- | --- | --- | --- | --- | --- | --- | --- | --- | --- |
| 108 | 1.2.4.5 | **Update UT Cases** | 1d | 2013-07-11 13:00 | 2013-07-12 12:00 |  | 1d |  |  |  |
| 109 | 1.2.4.5.1 | Update UT cases document | 0.5d | 2013-07-11 13:00 | 2013-07-11 17:00 | 107 | 1d | 0d |  |  |
| 110 | 1.2.4.5.2 | Review UT cases document round 2 | 0.5d | 2013-07-12 08:00 | 2013-07-12 12:00 | 109 | 1d | 0d |  |  |
| 111 | 1.2.4.6 | **Manual UT Execution** | 1d | 2013-07-12 13:00 | 2013-07-15 12:00 |  | 1d |  |  |  |
| 112 | 1.2.4.6.1 | Execute UT manually & Fix bugs | 0.5d | 2013-07-12 13:00 | 2013-07-12 17:00 | 110 | 1d | 0d |  |  |
| 113 | 1.2.4.6.2 | Review UT execution results round 1 | 0.5d | 2013-07-15 08:00 | 2013-07-15 12:00 | 112 | 1d | 0d |  |  |
| 114 | 1.2.4.7 | **Automated UT Execution** | 1.5d | 2013-07-15 13:00 | 2013-07-16 17:00 |  | 1d |  |  |  |
| 115 | 1.2.4.7.1 | Prepare UT scripts | 0.5d | 2013-07-15 13:00 | 2013-07-15 17:00 | 113 | 1d | 0d |  |  |
| 116 | 1.2.4.7.2 | Execute UT automatedly, Tuning scripts, update codes | 0.5d | 2013-07-16 08:00 | 2013-07-16 12:00 | 115 | 1d | 0d |  |  |
| 117 | 1.2.4.7.3 | Review UT scripts | 0.5d | 2013-07-16 13:00 | 2013-07-16 17:00 | 116 | 1d |  |  |  |
| 118 | 1.2.5 | **UC1.2 - Nhap hoa don mua hang** | 11d | 2013-07-02 08:00 | 2013-07-16 17:00 |  | 1d |  | Dev5 | 88h |
| 119 | 1.2.5.1 | **Requirement Analyzing** | 1.5d | 2013-07-02 08:00 | 2013-07-03 12:00 |  | 1d |  |  |  |
| 120 | 1.2.5.1.1 | Study requirement | 0.4d | 2013-07-02 08:00 | 2013-07-02 11:12 |  | 1d | 0d |  |  |
| 121 | 1.2.5.1.2 | Prepare requirement specification | 0.6d | 2013-07-02 11:12 | 2013-07-02 17:00 | 120 | 1d | 0d |  |  |
| 122 | 1.2.5.1.3 | Review requirement specification | 0.5d | 2013-07-03 08:00 | 2013-07-03 12:00 | 121 | 1d | 0d |  |  |
| 123 | 1.2.5.2 | **Detail Design** | 1.5d | 2013-07-03 13:00 | 2013-07-04 17:00 |  | 1d |  |  |  |
| 124 | 1.2.5.2.1 | Study input design document | 0.4d | 2013-07-03 13:00 | 2013-07-03 16:12 | 122 | 1d | 0d |  |  |
| 125 | 1.2.5.2.2 | Prepare design specification | 0.6d | 2013-07-03 16:12 | 2013-07-04 12:00 | 124 | 1d | 0d |  |  |
| 126 | 1.2.5.2.3 | Review design specification | 0.5d | 2013-07-04 13:00 | 2013-07-04 17:00 | 125 | 1d | 0d |  |  |
| 127 | 1.2.5.3 | **UT Cases Preparing** | 1.5d | 2013-07-05 08:00 | 2013-07-08 12:00 |  | 1d |  |  |  |
| 128 | 1.2.5.3.1 | Prepare UT cases document | 1d | 2013-07-05 08:00 | 2013-07-05 17:00 | 126 | 1d | 0d |  |  |
| 129 | 1.2.5.3.2 | Review UT cases document round 1 | 0.5d | 2013-07-08 08:00 | 2013-07-08 12:00 | 128 | 1d | 0d |  |  |
| 130 | 1.2.5.4 | **Coding** | 3d | 2013-07-08 13:00 | 2013-07-11 12:00 |  | 1d |  |  |  |
| 131 | 1.2.5.4.1 | Code (output: draft version) | 1d | 2013-07-08 13:00 | 2013-07-09 12:00 | 129 | 1d | 0d |  |  |
| 132 | 1.2.5.4.2 | Review codes round 1 | 0.5d | 2013-07-09 13:00 | 2013-07-09 17:00 | 131 | 1d | 0d |  |  |
| 133 | 1.2.5.4.3 | Complete code | 0.5d | 2013-07-10 08:00 | 2013-07-10 12:00 | 132 | 1d | 0d |  |  |
| 134 | 1.2.5.4.4 | Self review & Fix bugs | 0.5d | 2013-07-10 13:00 | 2013-07-10 17:00 | 133 | 1d | 0d |  |  |
| 135 | 1.2.5.4.5 | Review codes round 2 | 0.5d | 2013-07-11 08:00 | 2013-07-11 12:00 | 134 | 1d | 0d |  |  |

Notes:
- 110: Eval4
- 113: Eval5
- 122: Eval1
- 126: Eval2
- 135: Eval3

| ID | WBS | Task | Duration | Start | Finish | Predecessors | Total slack | Free slack | Resources | Work |
| --- | --- | --- | --- | --- | --- | --- | --- | --- | --- | --- |
| 136 | 1.2.5.5 | **Update UT Cases** | 1d | 2013-07-11 13:00 | 2013-07-12 12:00 |  | 1d |  |  |  |
| 137 | 1.2.5.5.1 | Update UT cases document | 0.5d | 2013-07-11 13:00 | 2013-07-11 17:00 | 135 | 1d | 0d |  |  |
| 138 | 1.2.5.5.2 | Review UT cases document round 2 | 0.5d | 2013-07-12 08:00 | 2013-07-12 12:00 | 137 | 1d | 0d |  |  |
| 139 | 1.2.5.6 | **Manual UT Execution** | 1d | 2013-07-12 13:00 | 2013-07-15 12:00 |  | 1d |  |  |  |
| 140 | 1.2.5.6.1 | Execute UT manually & Fix bugs | 0.5d | 2013-07-12 13:00 | 2013-07-12 17:00 | 138 | 1d | 0d |  |  |
| 141 | 1.2.5.6.2 | Review UT execution results round 1 | 0.5d | 2013-07-15 08:00 | 2013-07-15 12:00 | 140 | 1d | 0d |  |  |
| 142 | 1.2.5.7 | **Automated UT Execution** | 1.5d | 2013-07-15 13:00 | 2013-07-16 17:00 |  | 1d |  |  |  |
| 143 | 1.2.5.7.1 | Prepare UT scripts | 0.5d | 2013-07-15 13:00 | 2013-07-15 17:00 | 141 | 1d | 0d |  |  |
| 144 | 1.2.5.7.2 | Execute UT automatedly, Tuning scripts, update codes | 0.5d | 2013-07-16 08:00 | 2013-07-16 12:00 | 143 | 1d | 0d |  |  |
| 145 | 1.2.5.7.3 | Review UT scripts | 0.5d | 2013-07-16 13:00 | 2013-07-16 17:00 | 144 | 1d |  |  |  |
| 146 | 1.2.6 | **Evaluation** | 1d | 2013-07-17 08:00 | 2013-07-17 17:00 |  | 0d |  |  | 8h |
| 147 | 1.2.6.1 | Iteration result presentation | 0.7d | 2013-07-17 08:00 | 2013-07-17 14:36 | 6 | 0d |  | Team | 5.6h |
| 148 | 1.2.6.2 | Review & milestone review | 0.3d | 2013-07-17 14:36 | 2013-07-17 17:00 | 147 | 0d |  | Team | 2.4h |
| 149 | 1.3 | **Project Iteration 2** | 12d | 2013-07-18 08:00 | 2013-08-02 17:00 | 5 | 0d |  |  | 448h |
| 150 | 1.3.1 | **UC4.2 - Danh sach hoa don ban** | 11d | 2013-07-18 08:00 | 2013-08-01 17:00 |  | 1d |  | Dev1 | 88h |
| 151 | 1.3.1.1 | **Requirement Analyzing** | 1.5d | 2013-07-18 08:00 | 2013-07-19 12:00 |  | 1d |  |  |  |
| 152 | 1.3.1.1.1 | Study requirement | 0.4d | 2013-07-18 08:00 | 2013-07-18 11:12 |  | 1d | 0d |  |  |
| 153 | 1.3.1.1.2 | Prepare requirement specification | 0.6d | 2013-07-18 11:12 | 2013-07-18 17:00 | 152 | 1d | 0d |  |  |
| 154 | 1.3.1.1.3 | Review requirement specification | 0.5d | 2013-07-19 08:00 | 2013-07-19 12:00 | 153 | 1d | 0d |  |  |
| 155 | 1.3.1.2 | **Detail Design** | 1.5d | 2013-07-19 13:00 | 2013-07-22 17:00 |  | 1d |  |  |  |
| 156 | 1.3.1.2.1 | Study input design document | 0.4d | 2013-07-19 13:00 | 2013-07-19 16:12 | 154 | 1d | 0d |  |  |
| 157 | 1.3.1.2.2 | Prepare design specification | 0.6d | 2013-07-19 16:12 | 2013-07-22 12:00 | 156 | 1d | 0d |  |  |
| 158 | 1.3.1.2.3 | Review design specification | 0.5d | 2013-07-22 13:00 | 2013-07-22 17:00 | 157 | 1d | 0d |  |  |
| 159 | 1.3.1.3 | **UT Cases Preparing** | 1.5d | 2013-07-23 08:00 | 2013-07-24 12:00 |  | 1d |  |  |  |
| 160 | 1.3.1.3.1 | Prepare UT cases document | 1d | 2013-07-23 08:00 | 2013-07-23 17:00 | 158 | 1d | 0d |  |  |
| 161 | 1.3.1.3.2 | Review UT cases document round 1 | 0.5d | 2013-07-24 08:00 | 2013-07-24 12:00 | 160 | 1d | 0d |  |  |

Notes:
- 138: Eval4
- 141: Eval5
- 154: Eval1
- 158: Eval2

| ID | WBS | Task | Duration | Start | Finish | Predecessors | Total slack | Free slack | Resources | Work |
| --- | --- | --- | --- | --- | --- | --- | --- | --- | --- | --- |
| 162 | 1.3.1.4 | **Coding** | 3d | 2013-07-24 13:00 | 2013-07-29 12:00 |  | 1d |  |  |  |
| 163 | 1.3.1.4.1 | Code (output: draft version) | 1d | 2013-07-24 13:00 | 2013-07-25 12:00 | 161 | 1d | 0d |  |  |
| 164 | 1.3.1.4.2 | Review codes round 1 | 0.5d | 2013-07-25 13:00 | 2013-07-25 17:00 | 163 | 1d | 0d |  |  |
| 165 | 1.3.1.4.3 | Complete code | 0.5d | 2013-07-26 08:00 | 2013-07-26 12:00 | 164 | 1d | 0d |  |  |
| 166 | 1.3.1.4.4 | Self review & Fix bugs | 0.5d | 2013-07-26 13:00 | 2013-07-26 17:00 | 165 | 1d | 0d |  |  |
| 167 | 1.3.1.4.5 | Review codes round 2 | 0.5d | 2013-07-29 08:00 | 2013-07-29 12:00 | 166 | 1d | 0d |  |  |
| 168 | 1.3.1.5 | **Update UT Cases** | 1d | 2013-07-29 13:00 | 2013-07-30 12:00 |  | 1d |  |  |  |
| 169 | 1.3.1.5.1 | Update UT cases document | 0.5d | 2013-07-29 13:00 | 2013-07-29 17:00 | 167 | 1d | 0d |  |  |
| 170 | 1.3.1.5.2 | Review UT cases document round 2 | 0.5d | 2013-07-30 08:00 | 2013-07-30 12:00 | 169 | 1d | 0d |  |  |
| 171 | 1.3.1.6 | **Manual UT Execution** | 1d | 2013-07-30 13:00 | 2013-07-31 12:00 |  | 1d |  |  |  |
| 172 | 1.3.1.6.1 | Execute UT manually & Fix bugs | 0.5d | 2013-07-30 13:00 | 2013-07-30 17:00 | 170 | 1d | 0d |  |  |
| 173 | 1.3.1.6.2 | Review UT execution results round 1 | 0.5d | 2013-07-31 08:00 | 2013-07-31 12:00 | 172 | 1d | 0d |  |  |
| 174 | 1.3.1.7 | **Automated UT Execution** | 1.5d | 2013-07-31 13:00 | 2013-08-01 17:00 |  | 1d |  |  |  |
| 175 | 1.3.1.7.1 | Prepare UT scripts | 0.5d | 2013-07-31 13:00 | 2013-07-31 17:00 | 173 | 1d | 0d |  |  |
| 176 | 1.3.1.7.2 | Execute UT automatedly, Tuning scripts, update codes | 0.5d | 2013-08-01 08:00 | 2013-08-01 12:00 | 175 | 1d | 0d |  |  |
| 177 | 1.3.1.7.3 | Review UT scripts | 0.5d | 2013-08-01 13:00 | 2013-08-01 17:00 | 176 | 1d |  |  |  |
| 178 | 1.3.2 | **UC4.1 - Nhap hoa don ban hang** | 11d | 2013-07-18 08:00 | 2013-08-01 17:00 |  | 1d |  | Dev2 | 88h |
| 179 | 1.3.2.1 | **Requirement Analyzing** | 1.5d | 2013-07-18 08:00 | 2013-07-19 12:00 |  | 1d |  |  |  |
| 180 | 1.3.2.1.1 | Study requirement | 0.4d | 2013-07-18 08:00 | 2013-07-18 11:12 |  | 1d | 0d |  |  |
| 181 | 1.3.2.1.2 | Prepare requirement specification | 0.6d | 2013-07-18 11:12 | 2013-07-18 17:00 | 180 | 1d | 0d |  |  |
| 182 | 1.3.2.1.3 | Review requirement specification | 0.5d | 2013-07-19 08:00 | 2013-07-19 12:00 | 181 | 1d | 0d |  |  |
| 183 | 1.3.2.2 | **Detail Design** | 1.5d | 2013-07-19 13:00 | 2013-07-22 17:00 |  | 1d |  |  |  |
| 184 | 1.3.2.2.1 | Study input design document | 0.4d | 2013-07-19 13:00 | 2013-07-19 16:12 | 182 | 1d | 0d |  |  |
| 185 | 1.3.2.2.2 | Prepare design specification | 0.6d | 2013-07-19 16:12 | 2013-07-22 12:00 | 184 | 1d | 0d |  |  |
| 186 | 1.3.2.2.3 | Review design specification | 0.5d | 2013-07-22 13:00 | 2013-07-22 17:00 | 185 | 1d | 0d |  |  |

Notes:
- 167: Eval3
- 170: Eval4
- 173: Eval5
- 182: Eval1
- 186: Eval2

| ID | WBS | Task | Duration | Start | Finish | Predecessors | Total slack | Free slack | Resources | Work |
| --- | --- | --- | --- | --- | --- | --- | --- | --- | --- | --- |
| 187 | 1.3.2.3 | **UT Cases Preparing** | 1.5d | 2013-07-23 08:00 | 2013-07-24 12:00 |  | 1d |  |  |  |
| 188 | 1.3.2.3.1 | Prepare UT cases document | 1d | 2013-07-23 08:00 | 2013-07-23 17:00 | 186 | 1d | 0d |  |  |
| 189 | 1.3.2.3.2 | Review UT cases document round 1 | 0.5d | 2013-07-24 08:00 | 2013-07-24 12:00 | 188 | 1d | 0d |  |  |
| 190 | 1.3.2.4 | **Coding** | 3d | 2013-07-24 13:00 | 2013-07-29 12:00 |  | 1d |  |  |  |
| 191 | 1.3.2.4.1 | Code (output: draft version) | 1d | 2013-07-24 13:00 | 2013-07-25 12:00 | 189 | 1d | 0d |  |  |
| 192 | 1.3.2.4.2 | Review codes round 1 | 0.5d | 2013-07-25 13:00 | 2013-07-25 17:00 | 191 | 1d | 0d |  |  |
| 193 | 1.3.2.4.3 | Complete code | 0.5d | 2013-07-26 08:00 | 2013-07-26 12:00 | 192 | 1d | 0d |  |  |
| 194 | 1.3.2.4.4 | Self review & Fix bugs | 0.5d | 2013-07-26 13:00 | 2013-07-26 17:00 | 193 | 1d | 0d |  |  |
| 195 | 1.3.2.4.5 | Review codes round 2 | 0.5d | 2013-07-29 08:00 | 2013-07-29 12:00 | 194 | 1d | 0d |  |  |
| 196 | 1.3.2.5 | **Update UT Cases** | 1d | 2013-07-29 13:00 | 2013-07-30 12:00 |  | 1d |  |  |  |
| 197 | 1.3.2.5.1 | Update UT cases document | 0.5d | 2013-07-29 13:00 | 2013-07-29 17:00 | 195 | 1d | 0d |  |  |
| 198 | 1.3.2.5.2 | Review UT cases document round 2 | 0.5d | 2013-07-30 08:00 | 2013-07-30 12:00 | 197 | 1d | 0d |  |  |
| 199 | 1.3.2.6 | **Manual UT Execution** | 1d | 2013-07-30 13:00 | 2013-07-31 12:00 |  | 1d |  |  |  |
| 200 | 1.3.2.6.1 | Execute UT manually & Fix bugs | 0.5d | 2013-07-30 13:00 | 2013-07-30 17:00 | 198 | 1d | 0d |  |  |
| 201 | 1.3.2.6.2 | Review UT execution results round 1 | 0.5d | 2013-07-31 08:00 | 2013-07-31 12:00 | 200 | 1d | 0d |  |  |
| 202 | 1.3.2.7 | **Automated UT Execution** | 1.5d | 2013-07-31 13:00 | 2013-08-01 17:00 |  | 1d |  |  |  |
| 203 | 1.3.2.7.1 | Prepare UT scripts | 0.5d | 2013-07-31 13:00 | 2013-07-31 17:00 | 201 | 1d | 0d |  |  |
| 204 | 1.3.2.7.2 | Execute UT automatedly, Tuning scripts, update codes | 0.5d | 2013-08-01 08:00 | 2013-08-01 12:00 | 203 | 1d | 0d |  |  |
| 205 | 1.3.2.7.3 | Review UT scripts | 0.5d | 2013-08-01 13:00 | 2013-08-01 17:00 | 204 | 1d |  |  |  |
| 206 | 1.3.3 | **UC5 - Khach hang tra lai hang cho NPP** | 11d | 2013-07-18 08:00 | 2013-08-01 17:00 |  | 0d |  | Dev3 | 88h |
| 207 | 1.3.3.1 | **Requirement Analyzing** | 1.5d | 2013-07-18 08:00 | 2013-07-19 12:00 |  | 0d |  |  |  |
| 208 | 1.3.3.1.1 | Study requirement | 0.4d | 2013-07-18 08:00 | 2013-07-18 11:12 |  | 0d |  |  |  |
| 209 | 1.3.3.1.2 | Prepare requirement specification | 0.6d | 2013-07-18 11:12 | 2013-07-18 17:00 | 208 | 0d |  |  |  |
| 210 | 1.3.3.1.3 | Review requirement specification | 0.5d | 2013-07-19 08:00 | 2013-07-19 12:00 | 209 | 0d |  |  |  |

Notes:
- 195: Eval3
- 198: Eval4
- 201: Eval5
- 210: Eval1

| ID | WBS | Task | Duration | Start | Finish | Predecessors | Total slack | Free slack | Resources | Work |
| --- | --- | --- | --- | --- | --- | --- | --- | --- | --- | --- |
| 211 | 1.3.3.2 | **Detail Design** | 1.5d | 2013-07-19 13:00 | 2013-07-22 17:00 |  | 0d |  |  |  |
| 212 | 1.3.3.2.1 | Study input design document | 0.4d | 2013-07-19 13:00 | 2013-07-19 16:12 | 210 | 0d |  |  |  |
| 213 | 1.3.3.2.2 | Prepare design specification | 0.6d | 2013-07-19 16:12 | 2013-07-22 12:00 | 212 | 0d |  |  |  |
| 214 | 1.3.3.2.3 | Review design specification | 0.5d | 2013-07-22 13:00 | 2013-07-22 17:00 | 213 | 0d |  |  |  |
| 215 | 1.3.3.3 | **UT Cases Preparing** | 1.5d | 2013-07-23 08:00 | 2013-07-24 12:00 |  | 0d |  |  |  |
| 216 | 1.3.3.3.1 | Prepare UT cases document | 1d | 2013-07-23 08:00 | 2013-07-23 17:00 | 214 | 0d |  |  |  |
| 217 | 1.3.3.3.2 | Review UT cases document round 1 | 0.5d | 2013-07-24 08:00 | 2013-07-24 12:00 | 216 | 0d |  |  |  |
| 218 | 1.3.3.4 | **Coding** | 3d | 2013-07-24 13:00 | 2013-07-29 12:00 |  | 0d |  |  |  |
| 219 | 1.3.3.4.1 | Code (output: draft version) | 1d | 2013-07-24 13:00 | 2013-07-25 12:00 | 217 | 0d |  |  |  |
| 220 | 1.3.3.4.2 | Review codes round 1 | 0.5d | 2013-07-25 13:00 | 2013-07-25 17:00 | 219 | 0d |  |  |  |
| 221 | 1.3.3.4.3 | Complete code | 0.5d | 2013-07-26 08:00 | 2013-07-26 12:00 | 220 | 0d |  |  |  |
| 222 | 1.3.3.4.4 | Self review & Fix bugs | 0.5d | 2013-07-26 13:00 | 2013-07-26 17:00 | 221 | 0d |  |  |  |
| 223 | 1.3.3.4.5 | Review codes round 2 | 0.5d | 2013-07-29 08:00 | 2013-07-29 12:00 | 222 | 0d |  |  |  |
| 224 | 1.3.3.5 | **Update UT Cases** | 1d | 2013-07-29 13:00 | 2013-07-30 12:00 |  | 0d |  |  |  |
| 225 | 1.3.3.5.1 | Update UT cases document | 0.5d | 2013-07-29 13:00 | 2013-07-29 17:00 | 223 | 0d |  |  |  |
| 226 | 1.3.3.5.2 | Review UT cases document round 2 | 0.5d | 2013-07-30 08:00 | 2013-07-30 12:00 | 225 | 0d |  |  |  |
| 227 | 1.3.3.6 | **Manual UT Execution** | 1d | 2013-07-30 13:00 | 2013-07-31 12:00 |  | 0d |  |  |  |
| 228 | 1.3.3.6.1 | Execute UT manually & Fix bugs | 0.5d | 2013-07-30 13:00 | 2013-07-30 17:00 | 226 | 0d |  |  |  |
| 229 | 1.3.3.6.2 | Review UT execution results round 1 | 0.5d | 2013-07-31 08:00 | 2013-07-31 12:00 | 228 | 0d |  |  |  |
| 230 | 1.3.3.7 | **Automated UT Execution** | 1.5d | 2013-07-31 13:00 | 2013-08-01 17:00 |  | 0d |  |  |  |
| 231 | 1.3.3.7.1 | Prepare UT scripts | 0.5d | 2013-07-31 13:00 | 2013-07-31 17:00 | 229 | 0d |  |  |  |
| 232 | 1.3.3.7.2 | Execute UT automatedly, Tuning scripts, update codes | 0.5d | 2013-08-01 08:00 | 2013-08-01 12:00 | 231 | 0d |  |  |  |
| 233 | 1.3.3.7.3 | Review UT scripts | 0.5d | 2013-08-01 13:00 | 2013-08-01 17:00 | 232 | 0d |  |  |  |
| 234 | 1.3.4 | **UC6 - Quan ly phieu xuat kho cho NVBH** | 11d | 2013-07-18 08:00 | 2013-08-01 17:00 |  | 1d |  | Dev4 | 88h |
| 235 | 1.3.4.1 | **Requirement Analyzing** | 1.5d | 2013-07-18 08:00 | 2013-07-19 12:00 |  | 1d |  |  |  |
| 236 | 1.3.4.1.1 | Study requirement | 0.4d | 2013-07-18 08:00 | 2013-07-18 11:12 |  | 1d | 0d |  |  |
| 237 | 1.3.4.1.2 | Prepare requirement specification | 0.6d | 2013-07-18 11:12 | 2013-07-18 17:00 | 236 | 1d | 0d |  |  |
| 238 | 1.3.4.1.3 | Review requirement specification | 0.5d | 2013-07-19 08:00 | 2013-07-19 12:00 | 237 | 1d | 0d |  |  |

Notes:
- 214: Eval2
- 223: Eval3
- 226: Eval4
- 229: Eval5
- 238: Eval1

| ID | WBS | Task | Duration | Start | Finish | Predecessors | Total slack | Free slack | Resources | Work |
| --- | --- | --- | --- | --- | --- | --- | --- | --- | --- | --- |
| 239 | 1.3.4.2 | **Detail Design** | 1.5d | 2013-07-19 13:00 | 2013-07-22 17:00 |  | 1d |  |  |  |
| 240 | 1.3.4.2.1 | Study input design document | 0.4d | 2013-07-19 13:00 | 2013-07-19 16:12 | 238 | 1d | 0d |  |  |
| 241 | 1.3.4.2.2 | Prepare design specification | 0.6d | 2013-07-19 16:12 | 2013-07-22 12:00 | 240 | 1d | 0d |  |  |
| 242 | 1.3.4.2.3 | Review design specification | 0.5d | 2013-07-22 13:00 | 2013-07-22 17:00 | 241 | 1d | 0d |  |  |
| 243 | 1.3.4.3 | **UT Cases Preparing** | 1.5d | 2013-07-23 08:00 | 2013-07-24 12:00 |  | 1d |  |  |  |
| 244 | 1.3.4.3.1 | Prepare UT cases document | 1d | 2013-07-23 08:00 | 2013-07-23 17:00 | 242 | 1d | 0d |  |  |
| 245 | 1.3.4.3.2 | Review UT cases document round 1 | 0.5d | 2013-07-24 08:00 | 2013-07-24 12:00 | 244 | 1d | 0d |  |  |
| 246 | 1.3.4.4 | **Coding** | 3d | 2013-07-24 13:00 | 2013-07-29 12:00 |  | 1d |  |  |  |
| 247 | 1.3.4.4.1 | Code (output: draft version) | 1d | 2013-07-24 13:00 | 2013-07-25 12:00 | 245 | 1d | 0d |  |  |
| 248 | 1.3.4.4.2 | Review codes round 1 | 0.5d | 2013-07-25 13:00 | 2013-07-25 17:00 | 247 | 1d | 0d |  |  |
| 249 | 1.3.4.4.3 | Complete code | 0.5d | 2013-07-26 08:00 | 2013-07-26 12:00 | 248 | 1d | 0d |  |  |
| 250 | 1.3.4.4.4 | Self review & Fix bugs | 0.5d | 2013-07-26 13:00 | 2013-07-26 17:00 | 249 | 1d | 0d |  |  |
| 251 | 1.3.4.4.5 | Review codes round 2 | 0.5d | 2013-07-29 08:00 | 2013-07-29 12:00 | 250 | 1d | 0d |  |  |
| 252 | 1.3.4.5 | **Update UT Cases** | 1d | 2013-07-29 13:00 | 2013-07-30 12:00 |  | 1d |  |  |  |
| 253 | 1.3.4.5.1 | Update UT cases document | 0.5d | 2013-07-29 13:00 | 2013-07-29 17:00 | 251 | 1d | 0d |  |  |
| 254 | 1.3.4.5.2 | Review UT cases document round 2 | 0.5d | 2013-07-30 08:00 | 2013-07-30 12:00 | 253 | 1d | 0d |  |  |
| 255 | 1.3.4.6 | **Manual UT Execution** | 1d | 2013-07-30 13:00 | 2013-07-31 12:00 |  | 1d |  |  |  |
| 256 | 1.3.4.6.1 | Execute UT manually & Fix bugs | 0.5d | 2013-07-30 13:00 | 2013-07-30 17:00 | 254 | 1d | 0d |  |  |
| 257 | 1.3.4.6.2 | Review UT execution results round 1 | 0.5d | 2013-07-31 08:00 | 2013-07-31 12:00 | 256 | 1d | 0d |  |  |
| 258 | 1.3.4.7 | **Automated UT Execution** | 1.5d | 2013-07-31 13:00 | 2013-08-01 17:00 |  | 1d |  |  |  |
| 259 | 1.3.4.7.1 | Prepare UT scripts | 0.5d | 2013-07-31 13:00 | 2013-07-31 17:00 | 257 | 1d | 0d |  |  |
| 260 | 1.3.4.7.2 | Execute UT automatedly, Tuning scripts, update codes | 0.5d | 2013-08-01 08:00 | 2013-08-01 12:00 | 259 | 1d | 0d |  |  |
| 261 | 1.3.4.7.3 | Review UT scripts | 0.5d | 2013-08-01 13:00 | 2013-08-01 17:00 | 260 | 1d |  |  |  |
| 262 | 1.3.5 | **UC7 - NVBH tra lai hang cho NPP** | 11d | 2013-07-18 08:00 | 2013-08-01 17:00 |  | 1d |  | Dev5 | 88h |
| 263 | 1.3.5.1 | **Requirement Analyzing** | 1.5d | 2013-07-18 08:00 | 2013-07-19 12:00 |  | 1d |  |  |  |
| 264 | 1.3.5.1.1 | Study requirement | 0.4d | 2013-07-18 08:00 | 2013-07-18 11:12 |  | 1d | 0d |  |  |
| 265 | 1.3.5.1.2 | Prepare requirement specification | 0.6d | 2013-07-18 11:12 | 2013-07-18 17:00 | 264 | 1d | 0d |  |  |
| 266 | 1.3.5.1.3 | Review requirement specification | 0.5d | 2013-07-19 08:00 | 2013-07-19 12:00 | 265 | 1d | 0d |  |  |

Notes:
- 242: Eval2
- 251: Eval3
- 254: Eval4
- 257: Eval5
- 266: Eval1

| ID | WBS | Task | Duration | Start | Finish | Predecessors | Total slack | Free slack | Resources | Work |
| --- | --- | --- | --- | --- | --- | --- | --- | --- | --- | --- |
| 267 | 1.3.5.2 | **Detail Design** | 1.5d | 2013-07-19 13:00 | 2013-07-22 17:00 |  | 1d |  |  |  |
| 268 | 1.3.5.2.1 | Study input design document | 0.4d | 2013-07-19 13:00 | 2013-07-19 16:12 | 266 | 1d | 0d |  |  |
| 269 | 1.3.5.2.2 | Prepare design specification | 0.6d | 2013-07-19 16:12 | 2013-07-22 12:00 | 268 | 1d | 0d |  |  |
| 270 | 1.3.5.2.3 | Review design specification | 0.5d | 2013-07-22 13:00 | 2013-07-22 17:00 | 269 | 1d | 0d |  |  |
| 271 | 1.3.5.3 | **UT Cases Preparing** | 1.5d | 2013-07-23 08:00 | 2013-07-24 12:00 |  | 1d |  |  |  |
| 272 | 1.3.5.3.1 | Prepare UT cases document | 1d | 2013-07-23 08:00 | 2013-07-23 17:00 | 270 | 1d | 0d |  |  |
| 273 | 1.3.5.3.2 | Review UT cases document round 1 | 0.5d | 2013-07-24 08:00 | 2013-07-24 12:00 | 272 | 1d | 0d |  |  |
| 274 | 1.3.5.4 | **Coding** | 3d | 2013-07-24 13:00 | 2013-07-29 12:00 |  | 1d |  |  |  |
| 275 | 1.3.5.4.1 | Code (output: draft version) | 1d | 2013-07-24 13:00 | 2013-07-25 12:00 | 273 | 1d | 0d |  |  |
| 276 | 1.3.5.4.2 | Review codes round 1 | 0.5d | 2013-07-25 13:00 | 2013-07-25 17:00 | 275 | 1d | 0d |  |  |
| 277 | 1.3.5.4.3 | Complete code | 0.5d | 2013-07-26 08:00 | 2013-07-26 12:00 | 276 | 1d | 0d |  |  |
| 278 | 1.3.5.4.4 | Self review & Fix bugs | 0.5d | 2013-07-26 13:00 | 2013-07-26 17:00 | 277 | 1d | 0d |  |  |
| 279 | 1.3.5.4.5 | Review codes round 2 | 0.5d | 2013-07-29 08:00 | 2013-07-29 12:00 | 278 | 1d | 0d |  |  |
| 280 | 1.3.5.5 | **Update UT Cases** | 1d | 2013-07-29 13:00 | 2013-07-30 12:00 |  | 1d |  |  |  |
| 281 | 1.3.5.5.1 | Update UT cases document | 0.5d | 2013-07-29 13:00 | 2013-07-29 17:00 | 279 | 1d | 0d |  |  |
| 282 | 1.3.5.5.2 | Review UT cases document round 2 | 0.5d | 2013-07-30 08:00 | 2013-07-30 12:00 | 281 | 1d | 0d |  |  |
| 283 | 1.3.5.6 | **Manual UT Execution** | 1d | 2013-07-30 13:00 | 2013-07-31 12:00 |  | 1d |  |  |  |
| 284 | 1.3.5.6.1 | Execute UT manually & Fix bugs | 0.5d | 2013-07-30 13:00 | 2013-07-30 17:00 | 282 | 1d | 0d |  |  |
| 285 | 1.3.5.6.2 | Review UT execution results round 1 | 0.5d | 2013-07-31 08:00 | 2013-07-31 12:00 | 284 | 1d | 0d |  |  |
| 286 | 1.3.5.7 | **Automated UT Execution** | 1.5d | 2013-07-31 13:00 | 2013-08-01 17:00 |  | 1d |  |  |  |
| 287 | 1.3.5.7.1 | Prepare UT scripts | 0.5d | 2013-07-31 13:00 | 2013-07-31 17:00 | 285 | 1d | 0d |  |  |
| 288 | 1.3.5.7.2 | Execute UT automatedly, Tuning scripts, update codes | 0.5d | 2013-08-01 08:00 | 2013-08-01 12:00 | 287 | 1d | 0d |  |  |
| 289 | 1.3.5.7.3 | Review UT scripts | 0.5d | 2013-08-01 13:00 | 2013-08-01 17:00 | 288 | 1d |  |  |  |
| 290 | 1.3.6 | **Evaluation** | 1d | 2013-08-02 08:00 | 2013-08-02 17:00 |  | 0d |  |  | 8h |
| 291 | 1.3.6.1 | Iteration result presentation | 0.7d | 2013-08-02 08:00 | 2013-08-02 14:36 | 206 | 0d |  | Team | 5.6h |
| 292 | 1.3.6.2 | Review & milestone review | 0.3d | 2013-08-02 14:36 | 2013-08-02 17:00 | 291 | 0d |  | Team | 2.4h |

Notes:
- 270: Eval2
- 279: Eval3
- 282: Eval4
- 285: Eval5
